# 500V for DK

Schedule from a web Gantt chart, 2025-07-23 to 2026-03-16.
Every day is a working day

## Schedule

| ID | WBS | Task | Duration | Start | Finish | Predecessors | Complete | Status |
| --- | --- | --- | --- | --- | --- | --- | --- | --- |
| 2 | 1 | Kick-off | 4d | 2025-07-23 | 2025-07-26 |  | 100% | done |
| 3 | 2 | Design & Layout；EPI | 4d | 2025-07-27 | 2025-07-30 | 2 | 100% | done |
| 4 | 3 | T/O & MaskShip；Flow Setup | 4d | 2025-07-31 | 2025-08-03 | 3 | 100% | done |
| 5 | 4 | Fab Process | 25d | 2025-08-04 | 2025-08-28 | 4 | 100% | done |
| 6 | 5 | CP Test HW &CP test&WLRE | 15d | 2025-08-29 | 2025-09-12 | 5 | 100% | done |
| 7 | 6 | Assembly+FT Test | 50d | 2025-09-13 | 2025-11-01 | 6 | 100% | done |
| 8 | 7 | RB小管漏电--封装验证 | 27d | 2025-12-30 | 2026-01-25 |  |  |  |
| 9 | 8 | RB小管漏电--小管位置设计 | 61d | 2026-01-15 | 2026-03-16 |  |  |  |
| 11 | 9 | Datasheet/Dy-Idsat | 9d | 2025-11-02 | 2025-11-10 | 7 |  |  |
| 12 | 10 | Datasheet测试 | 5d | 2026-01-12 | 2026-01-16 |  |  |  |
| 13 | 11 | AE Roadtest | 1d | 2025-11-02 | 2025-11-02 | 7 |  |  |
| 14 | 12 | AE测第二批Roadtest，关注Idsat，dRon | 12d | 2026-01-12 | 2026-01-23 |  |  |  |
| 15 | 13 | **RE** | 70d | 2025-11-07 | 2026-01-15 |  |  | waiting |
| 16 | 13.1 | RE168h (Device) | 11d | 2025-11-07 | 2025-11-17 |  |  | waiting |
| 17 | 13.2 | RE500h (Device) | 25d | 2025-11-07 | 2025-12-01 |  |  | waiting |
| 18 | 13.3 | RE1000h (Device) | 70d | 2025-11-07 | 2026-01-15 |  |  | waiting |
